# XTSolutions

Schedule from MS Project, 2019-05-06 to 2019-08-14, costs in $, A marks actual dates.

## Calendars

- Estándar: Mon-Fri 09:00-13:00, 15:00-19:00; Sat-Sun off.

## Resources

| Resource | Rate | Cost per use |
| --- | --- | --- |
| STN |  | 5200 |
| AEC | 134 | 5000 |
| NCA | 130 |  |

## Schedule

| ID | WBS | Task | Type | Duration | Start | Finish | Predecessors | Complete | Remaining | Actual start | Total slack | Free slack | Constraint | Resources | Work | Actual work | Cost | Actual cost | Recursos |
| --- | --- | --- | --- | --- | --- | --- | --- | --- | --- | --- | --- | --- | --- | --- | --- | --- | --- | --- | --- |
| 1 | 1 | **HOTEL ALAMEDA** |  | 68d | 2019-05-13 | 2019-08-14 |  | 20% | 54.59d | 2019-05-06 |  |  |  | STN | 1464h | 380.79h | 172,380 | 50,399.82 | STN,AEC,NCA |
| 2 | 1.1 | **PLANEACION** |  | 17d | 2019-05-13 A | 2019-06-04 |  | 71% | 5d |  |  |  |  | NCA | 264h | 208.94h | 40,080 | 27,902.42 |  |
| 3 | 1.1.1 | Minuta de reunión de lanzamiento | manual | 4d | 2019-05-13 A | 2019-05-16 A |  | 100% |  |  |  |  |  | NCA | 32h | 32h | 1,200 | 1,200 |  |
| 4 | 1.1.2 | Acta de inicio de proyecto | manual | 1d | 2019-05-17 A | 2019-05-17 A | 3 | 100% |  |  |  |  |  | STN | 8h | 8h | 5,200 | 5,200 |  |
| 5 | 1.1.3 | Asignación de actividades | manual | 3d | 2019-05-20 A | 2019-05-22 A | 4 | 100% |  |  |  |  |  | NCA | 24h | 24h | 2,400 | 2,400 |  |
| 6 | 1.1.4 | Asignación de tiempos | manual | 2d | 2019-05-23 A | 2019-05-24 | 5 | 50% | 1d |  |  |  |  | STN; NCA | 8h | 8h | 3,400 | -380 |  |
| 7 | 1.1.5 | Asignación de recursos | manual | 2d | 2019-05-24 A | 2019-05-27 A | 6 | 100% |  |  |  |  |  | AEC | 16h | 16h | 3,400 | 3,400 |  |
| 8 | 1.1.6 | Asignación de roles |  | 2d | 2019-05-28 | 2019-05-29 | 7 |  |  |  | 2d | 0d |  | AEC | 16h |  | 3,400 |  |  |
| 9 | 1.1.7 | Establecer calendario de actividades |  | 2d | 2019-05-30 | 2019-05-31 | 8 |  |  |  | 2d |  |  | AEC | 16h |  | 2,000 |  |  |
| 10 | 1.1.8 | calcular costo del proyecto | manual | 1d | 2019-05-31 A | 2019-05-31 A | 4 | 100% |  |  |  |  |  | NCA | 8h | 8h | 700 | 700 |  |
| 11 | 1.1.9 | Entregar acta de inicio al cliente | milestone, manual | 0d | 2019-05-24 A | 2019-05-24 A |  | 100% |  |  |  |  |  | STN |  |  | 200 | 200 |  |
| 12 | 1.1.10 | Generar reporte de siguimiento del proyecto | milestone, manual | 0d | 2019-05-22 A | 2019-05-22 A | 11 | 100% |  |  |  |  |  | NCA |  |  | 500 | 500 |  |
| 13 | 1.2 | **ANALISIS** |  | 8d | 2019-05-28 | 2019-06-06 | 2 | 23% | 6.2d | 2019-05-06 |  |  |  | NCA | 152h | 29.6h | 29,900 | 17,297.4 |  |
| 14 | 1.2.1 | Analisis de la empresa | manual | 3d | 2019-05-28 A | 2019-05-30 |  | 3% | 2.9d |  |  |  |  | NCA; STN | 48h | 1.6h | 6,300 | 5,243.4 |  |
| 15 | 1.2.2 | Recolección de informacion | manual | 2d | 2019-05-31 A | 2019-06-03 | 14 | 5% | 1.9d |  |  |  |  | STN | 16h | 0.8h | 4,200 | 5,150 |  |
| 16 | 1.2.3 | Definir objetivos | manual | 1d | 2019-06-04 A | 2019-06-04 | 15 | 80% | 0.2d |  |  |  |  | AEC | 8h | 6.4h | 4,000 | 4,200 |  |
| 17 | 1.2.4 | Requeriminetos funcionales | manual | 1d | 2019-06-05 A | 2019-06-05 | 16 | 80% | 0.2d |  |  |  |  | NCA | 8h | 6.4h | 1,040 | 832 |  |
| 18 | 1.2.5 | Requerimientos no funcionales | manual | 1d | 2019-06-06 | 2019-06-06 | 17 |  |  |  |  |  |  | NCA | 8h |  | 1,040 |  |  |
| 19 | 1.2.6 | Validación y verificación | milestone, manual | 0d | 2019-06-06 | 2019-06-06 |  |  |  |  |  |  |  | AEC |  |  | 5,000 |  |  |
| 20 | 1.2.7 | Reporte de cumplimiento de actividades como de mejora | milestone, manual | 0d | 2019-05-06 | 2019-05-06 | 19 |  |  |  |  |  |  |  |  |  |  |  |  |
| 21 | 1.3 | **DISEÑO** |  | 7d | 2019-06-07 | 2019-06-17 | 13 |  |  |  |  |  |  | AEC | 128h |  | 35,756 |  |  |
| 22 | 1.3.1 | Diagrama entidad relación | manual | 2d | 2019-06-07 | 2019-06-10 |  |  |  |  |  |  |  | AEC | 16h |  | 6,300 |  |  |
| 23 | 1.3.2 | Definir ciclo de vida | manual | 1d | 2019-06-10 | 2019-06-10 | 22 |  |  |  |  |  |  | NCA; AEC | 16h |  | 4,800 |  |  |
| 24 | 1.3.3 | Definir colores y tipografia | manual | 1d | 2019-06-11 | 2019-06-11 | 23 |  |  |  |  |  |  | AEC | 8h |  | 6,072 |  |  |
| 25 | 1.3.4 | Modificacion de imágenes | manual | 2d | 2019-06-12 | 2019-06-13 | 24 |  |  |  |  |  |  | NCA | 16h |  | 2,080 |  |  |
| 26 | 1.3.5 | Definir arquitectura del sitio | manual | 1d | 2019-06-14 | 2019-06-14 |  |  |  |  |  |  |  | AEC | 8h |  | 2,000 |  |  |
| 27 | 1.3.6 | Crear mapa de navegacion |  | 1d | 2019-06-17 | 2019-06-17 |  |  |  |  | 0d |  | start no earlier than 2019-06-17 | STN | 8h |  | 2,000 |  |  |
| 28 | 1.3.7 | Hito del diseño | milestone | 0d | 2019-06-17 | 2019-06-17 | 27 |  |  |  | 0d |  |  |  |  |  |  |  |  |

| ID | WBS | Task | Type | Duration | Start | Finish | Predecessors | Total slack | Free slack | Constraint | Resources | Work | Cost |
| --- | --- | --- | --- | --- | --- | --- | --- | --- | --- | --- | --- | --- | --- |
| 29 | 1.4 | **DEPURACION** |  | 19d | 2019-06-17 | 2019-07-11 |  |  |  |  | STN | 304h | 37,744 |
| 30 | 1.4.1 | Codificacion de pantallas | manual | 15d | 2019-06-17 | 2019-07-05 |  |  |  |  | STN | 120h | 13,200 |
| 31 | 1.4.2 | Cambios de diseño | manual | 2d | 2019-07-08 | 2019-07-09 |  |  |  |  | AEC | 16h | 10,144 |
| 32 | 1.4.3 | Correccion de errores | manual | 2d | 2019-07-10 | 2019-07-11 |  |  |  |  | STN | 16h | 9,200 |
| 33 | 1.4.4 | Hito depuracion | milestone, manual | 0d | 2019-07-01 | 2019-07-01 |  |  |  |  |  |  |  |
| 34 | 1.5 | **IMPLEMENTACION** |  | 5d | 2019-07-11 | 2019-07-17 |  |  |  |  | NCA | 56h | 3,028 |
| 35 | 1.5.1 | Instalación de sistema | manual | 3d | 2019-07-11 | 2019-07-15 |  |  |  |  |  |  | -1,504 |
| 36 | 1.5.2 | Módulo de inicio | manual | 1d | 2019-07-16 | 2019-07-16 |  |  |  |  |  |  | -1,168 |
| 37 | 1.5.3 | Modulo de nosotros | manual | 1d | 2019-07-17 | 2019-07-17 | 36 |  |  |  |  | 8h |  |
| 38 | 1.5.4 | Validación y verificación | manual | 1d | 2019-07-18 | 2019-07-18 | 37 |  |  |  |  | 8h | 500 |
| 39 | 1.5.5 | Hito de implementacion | milestone, manual | 0d | 2019-06-18 | 2019-06-18 | 38 |  |  |  |  |  |  |
| 40 | 1.6 | **VALIDACION** |  | 6d | 2019-07-18 | 2019-07-25 | 34 |  |  |  | AEC | 96h | 14,432 |
| 41 | 1.6.1 | Pruebas unitarias | manual | 2d | 2019-07-18 | 2019-07-19 |  |  |  |  |  | 16h | 1,000 |
| 42 | 1.6.2 | Pruebas de módulo | manual | 2d | 2019-07-22 | 2019-07-23 | 41 |  |  |  |  | 16h | 1,000 |
| 43 | 1.6.3 | Pruebas de sistema | manual | 2d | 2019-07-24 | 2019-07-25 |  |  |  |  |  | 16h | 1,000 |
| 44 | 1.6.4 | Validación y verificación | milestone | 0d | 2019-07-25 | 2019-07-25 |  | 1d | 0d | start no earlier than 2019-07-25 |  |  |  |
| 45 | 1.6.5 | Hito validacion | milestone | 0d | 2019-07-25 | 2019-07-25 | 44 | 1d |  |  |  |  |  |
| 46 | 1.7 | **CIERRE PROYECTO** |  | 6d | 2019-07-26 | 2019-08-02 | 40 |  |  |  | STN | 168h | 6,240 |
| 47 | 1.7.1 | Instalación de sistema | manual | 3d | 2019-07-26 | 2019-07-30 |  |  |  |  | NCA | 96h |  |
| 48 | 1.7.2 | Capacitacion del personal | manual | 1d | 2019-07-31 | 2019-07-31 | 47 |  |  |  | NCA | 8h |  |
| 49 | 1.7.3 | Documentacion | manual | 1d | 2019-08-02 | 2019-08-02 |  |  |  |  | NCA | 8h | 1,040 |
| 50 | 1.7.4 | Acta de cierre de proyecto | manual | 1d | 2019-08-02 | 2019-08-02 | 48 |  |  |  |  | 8h |  |
| 51 | 1.7.5 | Validación y verificación | milestone, manual | 0d | 2019-08-02 | 2019-08-02 | 50 |  |  |  |  |  |  |
